Schedule from MS Project, 2023-03-18 to 2024-06-04, costs in $.

## Calendars

- Standard: Mon-Fri 08:00-12:00, 13:00-17:00; Sat-Sun off. Exceptions (off unless hours are given): 2023-03-18 to 2023-03-19 08:00-12:00, 13:00-17:00, 2023-03-25 08:00-12:00, 13:00-17:00.

## Resources

| Resource | Rate |
| --- | --- |
| Υπ.Έργου | 14 |
| Υπ. Ανάλυσης | 8.3 |
| Υπ. Σχεδίασης | 8.3 |
| Υπ.Υλοποίσης | 8.3 |
| Υπ. Τεχνικής Υποστήριξης | 8.3 |
| Υπ. Πόρων | 5 |
| Αναλυτής | 5 |
| Σχεδιαστής | 6.25 |
| Αρχιτέκτονας Λογισμικού | 6.25 |
| Προγραμματιστής | 5 |
| Διαχειριστής Βάσης Δεδομένων | 5.4 |
| Τεχνικός Δικτύων & Ασφάλειας | 5 |
| Εκπαιδευτικό Προσωπικό | 3 |
| Λογιστής | 5 |
| Προγραμματιστής Α | 5 |
| Προγραμματιστής Β | 5 |
| Προγραμματιστής Γ | 5 |
| Προγραμματιστής Δ | 5 |
| Προγραμματιστής Ε | 5 |

## Schedule

| ID | WBS | Task | Type | Duration | Start | Finish | Predecessors | Total slack | Free slack | Resources | Work | Cost |
| --- | --- | --- | --- | --- | --- | --- | --- | --- | --- | --- | --- | --- |
| 1 | 1 | Έναρξη Έργου | milestone | 0d | 2023-03-18 | 2023-03-18 |  | 0d |  |  |  |  |
| 2 | 2 | **ΠΕ1 Ανάλυση** |  | 151.67d | 2023-03-18 | 2023-10-12 | 1 | 0d |  |  | 2256h | 18,086.13 |
| 3 | 2.1 | **Επιχειρηματική Μοντελοποίηση** |  | 41.11d | 2023-03-18 | 2023-05-11 |  | 110.56d |  |  | 400h | 3,901.33 |
| 4 | 2.1.1 | Δημιουργία Διαγραμμάτων Δραστηριοτήτων |  | 21.11d | 2023-03-18 | 2023-04-13 |  | 110.56d | 0d | Υπ. Ανάλυσης [40%]; Αναλυτής; Υπ.Έργου | 304h | 3,262.93 |
| 5 | 2.1.2 | Επιλογή Μεθόδου Ανασχεδιασμού |  | 20d | 2023-04-13 | 2023-05-11 | 4 | 110.56d |  | Υπ. Ανάλυσης [30%]; Αναλυτής | 96h | 638.4 |
| 6 | 2.2 | **Ανάλυση Απαιτήσεων Χρηστών** |  | 151.67d | 2023-03-18 | 2023-10-12 |  | 0d |  |  | 1856h | 14,184.8 |
| 7 | 2.2.1 | Καταγραφή User Stories |  | 73.33d | 2023-03-18 | 2023-06-26 |  | 0d |  | Υπ. Ανάλυσης [30%]; Αναλυτής | 352h | 2,340.8 |
| 8 | 2.2.2 | Δημιουργία Διαγράμματος Περιπτώσεων Χρήσης |  | 24d | 2023-06-26 | 2023-07-28 | 7 | 0d |  | Υπ. Ανάλυσης; Αναλυτής | 384h | 2,553.6 |
| 9 | 2.2.3 | Δημιουργία Λεκτικών Περιγραφών Περιπτώσεων Χρήσης |  | 23d | 2023-07-28 | 2023-08-30 | 8 | 0d |  | Υπ. Ανάλυσης; Αναλυτής | 368h | 2,447.2 |
| 10 | 2.2.4 | Δημιουργία Mock-up screens |  | 31.33d | 2023-08-30 | 2023-10-12 | 9 | 0d |  | Υπ. Ανάλυσης; Αναλυτής; Υπ.Έργου | 752h | 6,843.2 |
| 11 | 3 | **ΠΕ2 Σχεδίαση** |  | 19.67d | 2023-10-12 | 2023-11-09 | 2 | 0d |  |  | 472h | 3,272.53 |
| 12 | 3.1 | **Δομική Μοντελοποίηση** |  | 7.33d | 2023-10-12 | 2023-10-23 |  | 0d |  |  | 176h | 1,220.27 |
| 13 | 3.1.1 | Δημιουργία Διαγράμματος Κλάσεων |  | 2.67d | 2023-10-12 | 2023-10-17 |  | 0d |  | Υπ. Σχεδίασης; Σχεδιαστής; Αρχιτέκτονας Λογισμικού | 64h | 443.73 |
| 14 | 3.1.2 | Δημιουργία Διαγραμμάτων Αντικειμένων |  | 1.33d | 2023-10-17 | 2023-10-18 | 13 | 0d |  | Υπ. Σχεδίασης; Σχεδιαστής; Αρχιτέκτονας Λογισμικού | 32h | 221.87 |
| 15 | 3.1.3 | Δημιουργία Διαγραμμάτων Ακολουθίας |  | 3.33d | 2023-10-18 | 2023-10-23 | 14 | 0d |  | Υπ. Σχεδίασης; Σχεδιαστής; Αρχιτέκτονας Λογισμικού | 80h | 554.67 |
| 16 | 3.2 | **Μοντελοποίηση Τελικών Διαγραμμάτων Συμπεριφοράς** |  | 12.33d | 2023-10-24 | 2023-11-09 |  | 0d |  |  | 296h | 2,052.27 |
| 17 | 3.2.1 | Δημιουργία Αναλυτικού Διαγράμματος Κλάσεων |  | 5d | 2023-10-24 | 2023-10-30 | 15 | 0d |  | Υπ. Σχεδίασης; Σχεδιαστής; Αρχιτέκτονας Λογισμικού | 120h | 832 |
| 18 | 3.2.2 | Δημιουργία Αναλυτικών Διαγραμμάτων Αντικειμένων |  | 7.33d | 2023-10-31 | 2023-11-09 | 17 | 0d |  | Υπ. Σχεδίασης; Σχεδιαστής; Αρχιτέκτονας Λογισμικού | 176h | 1,220.27 |
| 19 | 4 | **ΠΕ3 Υλοποίηση** |  | 98d | 2023-11-09 | 2024-03-26 | 11 | 0d |  |  | 2078.9h | 11,914.13 |
| 20 | 4.1 | **Ανάπτυξη Συστήματος** |  | 58d | 2023-11-09 | 2024-01-30 |  | 0d |  |  | 1598.9h | 8,458.13 |
| 21 | 4.1.1 | Κωδικοποίηση ΠΣ Υποβολής Αιτήσεων |  | 58d | 2023-11-09 | 2024-01-30 |  | 0d |  | Προγραμματιστής | 464h | 2,320 |
| 22 | 4.1.2 | Κωδικοποίηση ΠΣ Προβολής Αιτήσεων |  | 8.33d | 2023-11-09 | 2023-11-21 |  | 49.67d |  | Υπ.Υλοποίσης [20%]; Προγραμματιστής Β | 80h | 444 |
| 23 | 4.1.3 | Κωδικοποίηση ΠΣ Αξιολόγησης Αιτήσεων |  | 8.33d | 2023-11-09 | 2023-11-21 |  | 49.67d |  | Υπ.Υλοποίσης [20%]; Προγραμματιστής Γ | 80h | 444 |
| 24 | 4.1.4 | Δημιουργία Βάσης Δεδομένων |  | 25.98d | 2023-11-09 | 2023-12-15 |  | 32.02d |  | Υπ.Υλοποίσης [20%]; Προγραμματιστής Δ; Διαχειριστής Βάσης Δεδομένων | 457.26h | 2,506.59 |
| 25 | 4.1.5 | Παραμετροποίηση Συστήματος Ασφάλειας |  | 29.41d | 2023-11-09 | 2023-12-20 |  | 28.59d |  | Υπ.Υλοποίσης [20%]; Προγραμματιστής Ε; Τεχνικός Δικτύων & Ασφάλειας | 517.65h | 2,743.54 |

| ID | WBS | Task | Type | Duration | Start | Finish | Predecessors | Total slack | Resources | Work | Cost |
| --- | --- | --- | --- | --- | --- | --- | --- | --- | --- | --- | --- |
| 26 | 4.2 | **Έλεγχος** |  | 40d | 2024-01-30 | 2024-03-26 |  | 0d |  | 480h | 3,456 |
| 27 | 4.2.1 | Τεχνικός Έλεγχος |  | 20d | 2024-01-30 | 2024-02-27 | 25, 21, 22, 23, 24 | 0d | Υπ.Υλοποίσης; Προγραμματιστής [50%] | 240h | 1,728 |
| 28 | 4.2.2 | Έλεγχος Ποιότητας |  | 20d | 2024-02-27 | 2024-03-26 | 27 | 0d | Υπ.Υλοποίσης; Προγραμματιστής [50%] | 240h | 1,728 |
| 29 | 5 | **ΠΕ4 Παράδοση** |  | 50.17d | 2024-03-26 | 2024-06-04 | 19 | 0d |  | 1136h | 8,238.37 |
| 30 | 5.1 | **Εγκατάσταση ΠΣ** |  | 16d | 2024-03-26 | 2024-04-17 |  | 0d |  | 256h | 1,702.4 |
| 31 | 5.1.1 | Εγκατάσταση ΠΣ |  | 8d | 2024-03-26 | 2024-04-05 |  | 0d | Προγραμματιστής; Υπ. Τεχνικής Υποστήριξης | 128h | 851.2 |
| 32 | 5.1.2 | Διασύνδεση με Υπάρχοντα Συστήματα του ΚΥΔ |  | 8d | 2024-04-05 | 2024-04-17 | 31 | 0d | Προγραμματιστής; Υπ. Τεχνικής Υποστήριξης | 128h | 851.2 |
| 33 | 5.2 | **Εκπαίδευση** |  | 12.17d | 2024-04-17 | 2024-05-03 | 30 | 0d |  | 352h | 2,762.53 |
| 34 | 5.2.1 | Σύνταξη Εγχειριδίου ΟΠΣΥ |  | 7.5d | 2024-04-17 | 2024-04-26 |  | 0d | Υπ. Τεχνικής Υποστήριξης; Εκπαιδευτικό Προσωπικό; Υπ. Πόρων; Υπ.Έργου | 240h | 1,818 |
| 35 | 5.2.2 | Εκπαίδευση Πανεπιστημιακού Προσωπικού |  | 4.67d | 2024-04-26 | 2024-05-03 | 34 | 0d | Υπ. Τεχνικής Υποστήριξης; Εκπαιδευτικό Προσωπικό; Υπ.Έργου | 112h | 944.53 |
| 36 | 5.3 | **Συντήρηση** |  | 22d | 2024-05-03 | 2024-06-04 | 33 | 0d |  | 528h | 3,773.44 |
| 37 | 5.3.1 | Συμφωνία Όρων Συντήρησης |  | 22d | 2024-05-03 | 2024-06-04 |  | 0d | Υπ. Πόρων [50%]; Εκπαιδευτικό Προσωπικό [50%]; Υπ. Τεχνικής Υποστήριξης [50%] | 264h | 1,434.4 |
| 38 | 5.3.2 | Ορισμός Διαδικασιών Helpdesk |  | 13.2d | 2024-05-03 | 2024-05-22 |  | 8.8d | Υπ. Πόρων [50%]; Εκπαιδευτικό Προσωπικό [50%]; Υπ. Τεχνικής Υποστήριξης [50%]; Υπ.Έργου | 264h | 2,339.04 |
| 39 | 5.3.3 | Ολοκλήρωση Έργου | milestone | 0d | 2024-05-03 | 2024-05-03 |  | 22d |  |  |  |
