Schedule from MS Project, 2023-03-18 to 2024-05-10.

## Calendars

- Standard: Mon-Fri 08:00-12:00, 13:00-17:00; Sat-Sun off. Exceptions (off unless hours are given): 2023-03-18 to 2023-03-19 08:00-12:00, 13:00-17:00, 2023-03-25 08:00-12:00, 13:00-17:00.

## Resources

| Resource | Rate |
| --- | --- |
| Υπ.Έργου | 14 |
| Υπ. Ανάλυσης | 8.3 |
| Υπ. Σχεδίασης | 8.3 |
| Υπ.Υλοποίσης | 8.3 |
| Υπ. Τεχνικής Υποστήριξης | 8.3 |
| Υπ. Πόρων | 5 |
| Αναλυτής | 5 |
| Σχεδιαστής | 6.25 |
| Αρχιτέκτονας Λογισμικού | 6.25 |
| Προγραμματιστής | 5 |
| Διαχειριστής Βάσης Δεδομένων | 5.4 |
| Τεχνικός Δικτύων & Ασφάλειας | 5 |
| Εκπαιδευτικό Προσωπικό | 3 |
| Λογιστής | 5 |
| 2 |  |
| 7 |  |
| 3 |  |
| 8 |  |
| 9 |  |
| 4 |  |
| 10 |  |
| 12 |  |
| 11 |  |
| 5 |  |
| 6 |  |
| 13 |  |
| Προγραμματιστής Α | 5 |
| Προγραμματιστής Β | 5 |
| Προγραμματιστής Γ | 5 |
| Προγραμματιστής Δ | 5 |
| Προγραμματιστής Ε | 5 |
| 28 |  |
| 29 |  |
| 30 |  |
| 31 |  |

## Schedule

| ID | WBS | Task | Type | Duration | Start | Finish | Predecessors | Total slack | Free slack | Resources | Work |
| --- | --- | --- | --- | --- | --- | --- | --- | --- | --- | --- | --- |
| 1 | 1 | Έναρξη Έργου | milestone | 0d | 2023-03-18 | 2023-03-18 |  | 0d |  |  |  |
| 2 | 2 | **ΠΕ1 Ανάλυση** |  | 138d | 2023-03-18 | 2023-09-22 | 1 | 0d |  |  | 2256h |
| 3 | 2.1 | **Επιχειρηματική Μοντελοποίηση** |  | 31d | 2023-03-18 | 2023-04-26 |  | 107d |  |  | 400h |
| 4 | 2.1.1 | Δημιουργία Διαγραμμάτων Δραστηριοτήτων |  | 19d | 2023-03-18 | 2023-04-10 |  | 107d | 0d | 2; 7 | 304h |
| 5 | 2.1.2 | Επιλογή Μεθόδου Ανασχεδιασμού |  | 12d | 2023-04-11 | 2023-04-26 | 4 | 107d |  | 2 [50%]; 7 [50%] | 96h |
| 6 | 2.2 | **Ανάλυση Απαιτήσεων Χρηστών** |  | 138d | 2023-03-18 | 2023-09-22 |  | 0d |  |  | 1856h |
| 7 | 2.2.1 | Καταγραφή User Stories |  | 44d | 2023-03-18 | 2023-05-15 |  | 0d |  | 2 [50%]; 7 [50%] | 352h |
| 8 | 2.2.2 | Δημιουργία Διαγράμματος Περιπτώσεων Χρήσης |  | 24d | 2023-05-16 | 2023-06-16 | 7 | 0d |  | 2; 7 | 384h |
| 9 | 2.2.3 | Δημιουργία Λεκτικών Περιγραφών Περιπτώσεων Χρήσης |  | 23d | 2023-06-19 | 2023-07-19 | 8 | 0d |  | 2; 7 | 368h |
| 10 | 2.2.4 | Δημιουργία Mock-up screens |  | 47d | 2023-07-20 | 2023-09-22 | 9 | 0d |  | 2; 7 | 752h |
| 11 | 3 | **ΠΕ2 Σχεδίαση** |  | 19.67d | 2023-09-25 | 2023-10-20 | 2 | 0d |  |  | 472h |
| 12 | 3.1 | **Δομική Μοντελοποίηση** |  | 7.33d | 2023-09-25 | 2023-10-04 |  | 0d |  |  | 176h |
| 13 | 3.1.1 | Δημιουργία Διαγράμματος Κλάσεων |  | 2.67d | 2023-09-25 | 2023-09-27 |  | 0d |  | 3; 8; 9 | 64h |
| 14 | 3.1.2 | Δημιουργία Διαγραμμάτων Αντικειμένων |  | 1.33d | 2023-09-27 | 2023-09-28 | 13 | 0d |  | 3; 8; 9 | 32h |
| 15 | 3.1.3 | Δημιουργία Διαγραμμάτων Ακολουθίας |  | 3.33d | 2023-09-29 | 2023-10-04 | 14 | 0d |  | 3; 8; 9 | 80h |
| 16 | 3.2 | **Μοντελοποίηση Τελικών Διαγραμμάτων Συμπεριφοράς** |  | 12.33d | 2023-10-04 | 2023-10-20 |  | 0d |  |  | 296h |
| 17 | 3.2.1 | Δημιουργία Αναλυτικού Διαγράμματος Κλάσεων |  | 5d | 2023-10-04 | 2023-10-11 | 15 | 0d |  | 3; 8; 9 | 120h |
| 18 | 3.2.2 | Δημιουργία Αναλυτικών Διαγραμμάτων Αντικειμένων |  | 7.33d | 2023-10-11 | 2023-10-20 | 17 | 0d |  | 3; 8; 9 | 176h |
| 19 | 4 | **ΠΕ3 Υλοποίηση** |  | 90d | 2023-10-20 | 2024-02-23 | 11 | 0d |  |  | 2648h |
| 20 | 4.1 | **Ανάπτυξη Συστήματος** |  | 50d | 2023-10-20 | 2023-12-29 |  | 0d |  |  | 2328h |
| 21 | 4.1.1 | Κωδικοποίηση ΠΣ Υποβολής Αιτήσεων |  | 48.33d | 2023-10-20 | 2023-12-27 |  | 1.67d |  | 10 | 464h |
| 22 | 4.1.2 | Κωδικοποίηση ΠΣ Προβολής Αιτήσεων |  | 50d | 2023-10-20 | 2023-12-29 |  | 0d |  | 4 [20%]; 28 | 480h |
| 23 | 4.1.3 | Κωδικοποίηση ΠΣ Αξιολόγησης Αιτήσεων |  | 50d | 2023-10-20 | 2023-12-29 |  | 0d |  | 4 [20%]; 29 | 480h |
| 24 | 4.1.4 | Δημιουργία Βάσης Δεδομένων |  | 25.98d | 2023-10-20 | 2023-11-27 |  | 24.02d |  | 4 [20%]; 30; 11 | 424h |
| 25 | 4.1.5 | Παραμετροποίηση Συστήματος Ασφάλειας |  | 29.41d | 2023-10-20 | 2023-12-01 |  | 20.59d |  | 4 [20%]; 31; 12 | 480h |

| ID | WBS | Task | Type | Duration | Start | Finish | Predecessors | Total slack | Resources | Work |
| --- | --- | --- | --- | --- | --- | --- | --- | --- | --- | --- |
| 26 | 4.2 | **Έλεγχος** |  | 40d | 2023-12-29 | 2024-02-23 |  | 0d |  | 320h |
| 27 | 4.2.1 | Τεχνικός Έλεγχος |  | 20d | 2023-12-29 | 2024-01-26 | 25, 21, 22, 23, 24 | 0d | 4; 10 [50%] | 160h |
| 28 | 4.2.2 | Έλεγχος Ποιότητας |  | 20d | 2024-01-26 | 2024-02-23 | 27 | 0d | 4; 10 [50%] | 160h |
| 29 | 5 | **ΠΕ4 Παράδοση** |  | 55d | 2024-02-23 | 2024-05-10 | 19 | 0d |  | 1136h |
| 30 | 5.1 | **Εγκατάσταση ΠΣ** |  | 16d | 2024-02-23 | 2024-03-18 |  | 0d |  | 256h |
| 31 | 5.1.1 | Εγκατάσταση ΠΣ |  | 8d | 2024-02-23 | 2024-03-06 |  | 0d | 10; 5 | 128h |
| 32 | 5.1.2 | Διασύνδεση με Υπάρχοντα Συστήματα του ΚΥΔ |  | 8d | 2024-03-06 | 2024-03-18 | 31 | 0d | 10; 5 | 128h |
| 33 | 5.2 | **Εκπαίδευση** |  | 17d | 2024-03-18 | 2024-04-10 | 30 | 0d |  | 352h |
| 34 | 5.2.1 | Σύνταξη Εγχειριδίου ΟΠΣΥ |  | 10d | 2024-03-18 | 2024-04-01 |  | 0d | 5; 13; 6 | 240h |
| 35 | 5.2.2 | Εκπαίδευση Πανεπιστημιακού Προσωπικού |  | 7d | 2024-04-01 | 2024-04-10 | 34 | 0d | 5; 13 | 112h |
| 36 | 5.3 | **Συντήρηση** |  | 22d | 2024-04-10 | 2024-05-10 | 33 | 0d |  | 528h |
| 37 | 5.3.1 | Συμφωνία Όρων Συντήρησης |  | 22d | 2024-04-10 | 2024-05-10 |  | 0d | 6 [50%]; 13 [50%]; 5 [50%] | 264h |
| 38 | 5.3.2 | Ορισμός Διαδικασιών Helpdesk |  | 22d | 2024-04-10 | 2024-05-10 |  | 0d | 6 [50%]; 13 [50%]; 5 [50%] | 264h |
| 39 | 5.3.3 | Ολοκλήρωση Έργου | milestone | 0d | 2024-04-10 | 2024-04-10 |  | 22d |  |  |
